# Sheibak_Chagan_автоматическое_выравнивание

How a schedule from MS Project changed from version to version. A marks actual dates.

## Version 1 (saved 2024-03-11, file Факт.mpp)

Note of the change: Управление IT-проектами

| ID | WBS | Task | Duration | Start | Finish | Predecessors | Complete | Total float |
| --- | --- | --- | --- | --- | --- | --- | --- | --- |
| 1 |  | Начало проекта | 2d | 2024-02-26 | 2024-02-27 | 3 |  | 2d |
| 2 | 2 | **Выравнивание стен** | 15d | 2024-02-20 | 2024-03-11 |  |  | 2d |
| 3 |  | Стены в спальне | 4d | 2024-02-20 | 2024-02-23 |  |  | 2d |
| 4 |  | Стены в гостиной | 4d | 2024-02-26 | 2024-02-29 | 3 |  | 13.62d |
| 5 |  | Стены в кухне | 3d | 2024-03-01 | 2024-03-05 | 4 |  | 13.62d |
| 6 |  | Стены в прихожей | 4d | 2024-03-06 | 2024-03-11 | 5 |  | 13.62d |
| 7 |  | Выравнивание стен завершено | 0d | 2024-03-11 | 2024-03-11 | 6 |  | 13.62d |
| 8 | 3 | **Санузел** | 16d | 2024-03-06 | 2024-03-27 |  |  | 1.62d |
| 9 |  | Снятие штукатурки в санузле | 5d | 2024-03-06 | 2024-03-12 | 1 |  | 2d |
| 10 |  | Отделка стен санузла | 4d | 2024-03-13 | 2024-03-18 | 9 |  | 2d |
| 11 |  | Отделка потолка санузла | 2d | 2024-03-19 | 2024-03-20 | 10 |  | 2d |
| 12 |  | Отделка пола санузла | 2d | 2024-03-25 | 2024-03-26 | 11 |  | 1.62d |
| 13 |  | Установка сантехнического оборудования | 1d | 2024-03-27 | 2024-03-27 | 12 |  | 1.62d |
| 14 |  | Ремонт санузла завершен | 0d | 2024-03-27 | 2024-03-27 | 13 |  | 1.62d |
| 15 | 4 | **Ванная** | 22.62d | 2024-02-28 A | 2024-03-29 |  | 99% | 0d |
| 16 |  | Снятие штукатурки в ванной | 4.62d | 2024-02-28 A | 2024-03-05 A | 1 | 100% |  |
| 17 |  | Отделка стен в ванной | 5d | 2024-03-05 A | 2024-03-12 A | 16 | 100% |  |
| 18 |  | Отделка потолка в ванной | 2d | 2024-03-20 A | 2024-03-22 A | 17 | 100% |  |
| 19 |  | Отделка пола в ванной | 2d | 2024-03-26 A | 2024-03-28 A | 18 | 100% |  |
| 20 |  | Установка сантехники | 1d | 2024-03-28 A | 2024-03-29 A | 19 | 100% |  |
| 21 |  | Ремонт ванной завершен | 0d | 2024-03-29 | 2024-03-29 | 20 |  | 0d |
| 22 | 5 | **Отделка стен** | 23d | 2024-03-29 | 2024-05-01 |  |  | 0d |
| 23 |  | Отделка стен в спальне | 5d | 2024-03-29 | 2024-04-05 | 7, 14, 21 |  | 0d |
| 24 |  | Отделка стен в гостинной | 7d | 2024-04-05 | 2024-04-16 | 23 |  | 0d |
| 25 |  | Отделка стен в кухне | 5d | 2024-04-16 | 2024-04-23 | 24 |  | 0d |
| 26 |  | Отделка стен в прихожей | 6d | 2024-04-23 | 2024-05-01 | 25 |  | 0d |
| 27 |  | Отделка стен завершена | 0d | 2024-05-01 | 2024-05-01 | 26 |  | 10d |
| 28 | 6 | **Потолки** | 38.62d | 2024-03-12 | 2024-05-03 |  |  | 8d |
| 29 |  | Замер | 2d | 2024-03-12 | 2024-03-13 | 7 |  | 22.62d |
| 30 |  | Заказ и оплата потолков | 2d | 2024-03-14 | 2024-03-15 | 29 |  | 22.62d |
| 31 |  | Навесной потолок в спальне | 2d | 2024-04-05 | 2024-04-09 | 23, 30FS+10d |  | 20d |
| 32 |  | Навесной потолок в гостиной | 2d | 2024-04-16 | 2024-04-18 | 24, 30FS+10d |  | 13d |
| 33 |  | Панельный потолок в кухне | 2d | 2024-05-01 | 2024-05-03 | 25, 30 |  | 5d |
| 34 |  | Навесной потолок в прихожей | 2d | 2024-05-01 | 2024-05-03 | 26, 30FS+10d |  | 0d |
| 35 |  | Монтаж потолков завершен | 0d | 2024-05-03 | 2024-05-03 | 31, 32, 33, 34 |  | 8d |
| 36 | 7 | **Полы** | 26d | 2024-04-09 | 2024-05-15 |  |  | 0d |
| 37 |  | Отделка полов в спальне | 6d | 2024-04-09 | 2024-04-17 | 31 |  | 20d |
| 38 |  | Отделка полов в гостиной | 6d | 2024-04-18 | 2024-04-26 | 32 |  | 13d |
| 39 |  | Отделка полов в кухне | 3d | 2024-05-03 | 2024-05-08 | 33 |  | 5d |
| 40 |  | Отделка полов в прихожей | 5d | 2024-05-08 | 2024-05-15 | 34 |  | 0d |
| 41 |  | Отделка полов завершена | 0d | 2024-05-15 | 2024-05-15 | 37, 38, 39, 40 |  | 0d |
| 42 |  | Конец проекта | 0d | 2024-05-15 | 2024-05-15 | 41 |  | 0d |

## Version 2 (saved 2024-03-11, file Задачи.mpp)

Note of the change: Управление IT-проектами

Last finish 2024-05-15 → 2024-05-17 (+2d). Complete tasks 5 → 0.

Changed:

| ID | Task | Start | Finish | Duration | Complete | Total float |
| --- | --- | --- | --- | --- | --- | --- |
| 15 | **Ванная** | 2024-02-28 A → 2024-02-28 | 2024-03-29 → 2024-04-02 (+4d) | 22.62d → 25d | 99% → 0% | 0d → 3d |
| 16 | Снятие штукатурки в ванной | 2024-02-28 A → 2024-02-28 | 2024-03-05 A → 2024-03-05 | 4.62d → 5d | 100% → 0% | none → 5d |
| 17 | Отделка стен в ванной | 2024-03-05 A → 2024-03-06 (+1d) | 2024-03-12 A → 2024-03-12 |  | 100% → 0% | none → 5d |
| 18 | Отделка потолка в ванной | 2024-03-20 A → 2024-03-21 (+1d) | 2024-03-22 A → 2024-03-22 |  | 100% → 0% | none → 5d |
| 19 | Отделка пола в ванной | 2024-03-26 A → 2024-03-29 (+3d) | 2024-03-28 A → 2024-04-01 (+4d) |  | 100% → 0% | none → 3d |
| 20 | Установка сантехники | 2024-03-28 A → 2024-04-02 (+5d) | 2024-03-29 A → 2024-04-02 (+4d) |  | 100% → 0% | none → 3d |
| 21 | Ремонт ванной завершен | 2024-03-29 → 2024-04-02 (+4d) | 2024-03-29 → 2024-04-02 (+4d) |  |  | 0d → 3d |
| 22 | **Отделка стен** | 2024-03-29 → 2024-04-03 (+5d) | 2024-05-01 → 2024-05-03 (+2d) |  |  | 0d → 3d |
| 23 | Отделка стен в спальне | 2024-03-29 → 2024-04-03 (+5d) | 2024-04-05 → 2024-04-09 (+4d) |  |  | 0d → 3d |
| 24 | Отделка стен в гостинной | 2024-04-05 → 2024-04-10 (+5d) | 2024-04-16 → 2024-04-18 (+2d) |  |  | 0d → 3d |
| 25 | Отделка стен в кухне | 2024-04-16 → 2024-04-19 (+3d) | 2024-04-23 → 2024-04-25 (+2d) |  |  | 0d → 3d |
| 26 | Отделка стен в прихожей | 2024-04-23 → 2024-04-26 (+3d) | 2024-05-01 → 2024-05-03 (+2d) |  |  | 0d → 8d |
| 27 | Отделка стен завершена | 2024-05-01 → 2024-05-03 (+2d) | 2024-05-01 → 2024-05-03 (+2d) |  |  |  |
| 28 | **Потолки** |  | 2024-05-03 → 2024-05-07 (+4d) | 38.62d → 41d |  |  |
| 31 | Навесной потолок в спальне | 2024-04-05 → 2024-04-10 (+5d) | 2024-04-09 → 2024-04-11 (+2d) |  |  | 20d → 6d |
| 32 | Навесной потолок в гостиной | 2024-04-16 → 2024-04-19 (+3d) | 2024-04-18 → 2024-04-22 (+4d) |  |  | 13d → 6d |
| 33 | Панельный потолок в кухне | 2024-05-01 → 2024-05-06 (+5d) | 2024-05-03 → 2024-05-07 (+4d) |  |  | 5d → 3d |
| 34 | Навесной потолок в прихожей | 2024-05-01 → 2024-05-06 (+5d) | 2024-05-03 → 2024-05-07 (+4d) |  |  | 0d → 8d |
| 35 | Монтаж потолков завершен | 2024-05-03 → 2024-05-07 (+4d) | 2024-05-03 → 2024-05-07 (+4d) |  |  |  |
| 36 | **Полы** | 2024-04-09 → 2024-04-12 A (+3d) | 2024-05-15 → 2024-05-17 (+2d) |  | 0% → 99% |  |
| 37 | Отделка полов в спальне | 2024-04-09 → 2024-04-12 A (+3d) | 2024-04-17 → 2024-04-19 (+2d) |  | 0% → 99% |  |
| 38 | Отделка полов в гостиной | 2024-04-18 → 2024-04-23 A (+5d) | 2024-04-26 → 2024-04-30 (+4d) |  | 0% → 99% |  |
| 39 | Отделка полов в кухне | 2024-05-03 → 2024-05-08 A (+5d) | 2024-05-08 → 2024-05-10 (+2d) |  | 0% → 99% |  |
| 40 | Отделка полов в прихожей | 2024-05-08 → 2024-05-13 A (+5d) | 2024-05-15 → 2024-05-17 (+2d) |  | 0% → 99% |  |
| 41 | Отделка полов завершена | 2024-05-15 → 2024-05-17 (+2d) | 2024-05-15 → 2024-05-17 (+2d) |  |  |  |
| 42 | Конец проекта | 2024-05-15 → 2024-05-17 (+2d) | 2024-05-15 → 2024-05-17 (+2d) |  |  |  |

## Version 3 (saved 2024-03-11, file Ресурсы.mpp)

Note of the change: Управление IT-проектами

Last finish stays 2024-05-17. Complete tasks 0 → 4.

Changed:

| ID | Task | Start | Finish | Complete | Total float |
| --- | --- | --- | --- | --- | --- |
| 22 | **Отделка стен** | 2024-04-03 A |  | 0% → 99% | 3d → 10d |
| 23 | Отделка стен в спальне | 2024-04-03 A | 2024-04-09 A | 0% → 100% | 3d → none |
| 24 | Отделка стен в гостинной | 2024-04-10 A | 2024-04-18 A | 0% → 100% | 3d → none |
| 25 | Отделка стен в кухне | 2024-04-19 A | 2024-04-25 A | 0% → 100% | 3d → none |
| 26 | Отделка стен в прихожей | 2024-04-26 A | 2024-05-03 A | 0% → 100% | 8d → none |
| 36 | **Полы** | 2024-04-12 A → 2024-04-12 |  | 99% → 0% |  |
| 37 | Отделка полов в спальне | 2024-04-12 A → 2024-04-12 |  | 99% → 0% |  |
| 38 | Отделка полов в гостиной | 2024-04-23 A → 2024-04-23 |  | 99% → 0% |  |
| 39 | Отделка полов в кухне | 2024-05-08 A → 2024-05-08 |  | 99% → 0% |  |
| 40 | Отделка полов в прихожей | 2024-05-13 A → 2024-05-13 |  | 99% → 0% |  |

## Version 4 (saved 2024-03-11, file Процент.mpp)

Note of the change: Управление IT-проектами

Last finish stays 2024-05-17. Complete tasks 4 → 3.

Changed:

| ID | Task | Start | Finish | Duration | Complete | Total float | Other |
| --- | --- | --- | --- | --- | --- | --- | --- |
| 22 | **Отделка стен** | 2024-04-03 A → 2024-04-03 |  |  | 99% → 0% | 10d → 0d |  |
| 23 | Отделка стен в спальне | 2024-04-03 A → 2024-04-03 | 2024-04-09 A → 2024-04-09 |  | 100% → 0% | none → 0d |  |
| 24 | Отделка стен в гостинной | 2024-04-10 A → 2024-04-10 | 2024-04-18 A → 2024-04-18 |  | 100% → 0% | none → 0d |  |
| 25 | Отделка стен в кухне | 2024-04-19 A → 2024-04-19 | 2024-04-25 A → 2024-04-25 |  | 100% → 0% | none → 0d |  |
| 26 | Отделка стен в прихожей | 2024-04-26 A → 2024-04-26 | 2024-05-03 A → 2024-05-03 |  | 100% → 0% | none → 0d |  |
| 28 | **Потолки** | 2024-03-12 A |  |  | 0% → 68% |  |  |
| 29 | Замер | 2024-03-12 A | 2024-03-13 A |  | 0% → 100% | 25d → none |  |
| 30 | Заказ и оплата потолков | 2024-03-14 A | 2024-03-15 → 2024-03-19 A (+4d) | 2d → 4d | 0% → 100% | 25d → none | resources Навесной потолок → Навесной потолок [200%] |
| 31 | Навесной потолок в спальне | 2024-04-10 A | 2024-04-11 A |  | 0% → 100% | 20d → none |  |
| 32 | Навесной потолок в гостиной | 2024-04-19 A |  |  | 0% → 75% |  |  |
